Schedule from MS Project, 2023-01-20 to 2023-05-15, costs in €, A marks actual dates.
Microsoft

## Calendars

- Estándar: Mon-Fri 09:00-13:00, 15:00-19:00; Sat-Sun off.

## Resources

| Resource | Rate |
| --- | --- |
| Desarrollador | 12.82 |
| Consultor | 14.1 |
| Tester | 13.33 |
| Analista | 11.79 |
| Diseñador | 12.31 |

## Schedule

| ID | WBS | Task | Duration | Start | Finish | Predecessors | Complete | Remaining | Total slack | Resources | Work | Actual work | Cost | Actual cost |
| --- | --- | --- | --- | --- | --- | --- | --- | --- | --- | --- | --- | --- | --- | --- |
| 1 | 1 | **TFG** | 82d | 2023-01-20 A | 2023-05-15 |  | 4% | 78.32d | 0d |  | 780h | 35h | 9,830 | 436.06 |
| 2 | 1.1 | Reuniones | 12h | 2023-01-25 A | 2023-04-12 |  | 25% | 9h | 20d | Consultor | 12h | 3h | 169.2 | 42.3 |
| 3 | 1.2 | **Investigación** | 2d | 2023-01-20 A | 2023-01-23 A |  | 100% |  |  |  | 32h | 32h | 393.76 | 393.76 |
| 4 | 1.2.1 | Páginas de referencia | 1d | 2023-01-20 A | 2023-01-20 A |  | 100% |  |  | Desarrollador | 8h | 8h | 102.56 | 102.56 |
| 5 | 1.2.2 | Fuentes de información | 1d | 2023-01-23 A | 2023-01-23 A | 4 | 100% |  |  | Desarrollador | 8h | 8h | 102.56 | 102.56 |
| 6 | 1.2.3 | Tecnologías | 1d | 2023-01-20 A | 2023-01-20 A |  | 100% |  |  | Analista | 8h | 8h | 94.32 | 94.32 |
| 7 | 1.2.4 | APIs | 1d | 2023-01-23 A | 2023-01-23 A | 6 | 100% |  |  | Analista | 8h | 8h | 94.32 | 94.32 |
| 8 | 1.3 | **Análisis** | 15d | 2023-01-24 | 2023-02-13 |  |  |  | 0d |  | 120h |  | 1,414.8 |  |
| 9 | 1.3.1 | Definición del sistema | 2d | 2023-01-24 | 2023-01-25 | 7 |  |  | 0d | Analista | 16h |  | 188.64 |  |
| 10 | 1.3.2 | Requisitos del sistema | 3d | 2023-01-26 | 2023-01-30 | 9 |  |  | 0d | Analista | 24h |  | 282.96 |  |
| 11 | 1.3.3 | Análisis de diagramas de clases | 2d | 2023-01-31 | 2023-02-01 | 10 |  |  | 0d | Analista | 16h |  | 188.64 |  |
| 12 | 1.3.4 | Análisis de casos de uso y escenarios | 2d | 2023-02-02 | 2023-02-03 | 11 |  |  | 0d | Analista | 16h |  | 188.64 |  |
| 13 | 1.3.5 | Análisis de interfaces de usuario | 1d | 2023-02-06 | 2023-02-06 | 12 |  |  | 0d | Analista | 8h |  | 94.32 |  |
| 14 | 1.3.6 | Especificación del plan de pruebas | 5d | 2023-02-07 | 2023-02-13 | 13 |  |  | 0d | Analista | 40h |  | 471.6 |  |
| 15 | 1.4 | **Diseño** | 23d | 2023-02-14 | 2023-03-16 | 8 |  |  | 0d |  | 184h |  | 2,265.04 |  |
| 16 | 1.4.1 | Arquitectura del Sistema | 3d | 2023-02-14 | 2023-02-16 |  |  |  | 0d | Diseñador | 24h |  | 295.44 |  |
| 17 | 1.4.2 | Diseño de Clases | 2d | 2023-02-17 | 2023-02-20 | 16 |  |  | 0d | Diseñador | 16h |  | 196.96 |  |
| 18 | 1.4.3 | Diseño de la Base de Datos | 2d | 2023-02-21 | 2023-02-22 | 17 |  |  | 0d | Diseñador | 16h |  | 196.96 |  |
| 19 | 1.4.4 | Diseño de Interfaz de usuario | 2d | 2023-02-23 | 2023-02-24 | 18 |  |  | 0d | Diseñador | 16h |  | 196.96 |  |
| 20 | 1.4.5 | **Realización de diagramas** | 6d | 2023-02-27 | 2023-03-06 |  |  |  | 0d |  | 48h |  | 590.88 |  |
| 21 | 1.4.5.1 | Diagramas de clases | 2d | 2023-02-27 | 2023-02-28 | 19 |  |  | 0d | Diseñador | 16h |  | 196.96 |  |
| 22 | 1.4.5.2 | Diagramas de interacción | 2d | 2023-03-01 | 2023-03-02 | 21 |  |  | 0d | Diseñador | 16h |  | 196.96 |  |
| 23 | 1.4.5.3 | Diagramas de actividades | 2d | 2023-03-03 | 2023-03-06 | 22 |  |  | 0d | Diseñador | 16h |  | 196.96 |  |
| 24 | 1.4.6 | **Especificación Técnica del plan de pruebas** | 8d | 2023-03-07 | 2023-03-16 |  |  |  | 0d |  | 64h |  | 787.84 |  |
| 25 | 1.4.6.1 | Pruebas unitarias | 2d | 2023-03-07 | 2023-03-08 | 23 |  |  | 0d | Diseñador | 16h |  | 196.96 |  |
| 26 | 1.4.6.2 | Pruebas de integración | 2d | 2023-03-09 | 2023-03-10 | 25 |  |  | 0d | Diseñador | 16h |  | 196.96 |  |
| 27 | 1.4.6.3 | Pruebas del sistema | 2d | 2023-03-13 | 2023-03-14 | 26 |  |  | 0d | Diseñador | 16h |  | 196.96 |  |
| 28 | 1.4.6.4 | Pruebas de usabilidad | 2d | 2023-03-15 | 2023-03-16 | 27 |  |  | 0d | Diseñador | 16h |  | 196.96 |  |

| ID | WBS | Task | Duration | Start | Finish | Predecessors | Total slack | Free slack | Resources | Work | Cost |
| --- | --- | --- | --- | --- | --- | --- | --- | --- | --- | --- | --- |
| 29 | 1.5 | **Implementación** | 42d | 2023-03-17 | 2023-05-15 | 15 | 0d |  |  | 336h | 4,307.52 |
| 30 | 1.5.1 | Extracción de datos | 3d | 2023-03-17 | 2023-03-21 | 5 | 0d |  | Desarrollador | 24h | 307.68 |
| 31 | 1.5.2 | Base de datos | 3d | 2023-03-22 | 2023-03-24 | 30 | 0d |  | Desarrollador | 24h | 307.68 |
| 32 | 1.5.3 | Interfaz de usuario | 10d | 2023-03-27 | 2023-04-07 | 31 | 0d |  | Desarrollador | 80h | 1,025.6 |
| 33 | 1.5.4 | **Lógica de negocio** | 26d | 2023-04-10 | 2023-05-15 |  | 0d |  |  | 208h | 2,666.56 |
| 34 | 1.5.4.1 | Visualizar clasificación | 2d | 2023-04-10 | 2023-04-11 | 32 | 0d |  | Desarrollador | 16h | 205.12 |
| 35 | 1.5.4.2 | Visualizar todos los jugadores | 2d | 2023-04-12 | 2023-04-13 | 34 | 0d |  | Desarrollador | 16h | 205.12 |
| 36 | 1.5.4.3 | Visualizar todos los equipos | 2d | 2023-04-14 | 2023-04-17 | 35 | 0d |  | Desarrollador | 16h | 205.12 |
| 37 | 1.5.4.4 | Visualizar estadísticas de un jugador | 5d | 2023-04-18 | 2023-04-24 | 36 | 0d |  | Desarrollador | 40h | 512.8 |
| 38 | 1.5.4.5 | Visualizar estadísticas de un equipo | 5d | 2023-04-25 | 2023-05-01 | 37 | 0d |  | Desarrollador | 40h | 512.8 |
| 39 | 1.5.4.6 | Visualizar estadísticas de un partido | 5d | 2023-05-02 | 2023-05-08 | 38 | 0d |  | Desarrollador | 40h | 512.8 |
| 40 | 1.5.4.7 | Apartado de información del dominio | 5d | 2023-05-09 | 2023-05-15 | 39 | 0d |  | Desarrollador | 40h | 512.8 |
| 41 | 1.6 | **Desarrollo de pruebas** | 12d | 2023-03-17 | 2023-04-03 | 15 | 30d |  |  | 96h | 1,279.68 |
| 42 | 1.6.1 | Pruebas unitarias | 3d | 2023-03-17 | 2023-03-21 |  | 30d | 0d | Tester | 24h | 319.92 |
| 43 | 1.6.2 | Pruebas de integración | 3d | 2023-03-22 | 2023-03-24 | 42 | 30d | 0d | Tester | 24h | 319.92 |
| 44 | 1.6.3 | Pruebas del sistema | 3d | 2023-03-27 | 2023-03-29 | 43 | 30d | 0d | Tester | 24h | 319.92 |
| 45 | 1.6.4 | Pruebas de usabilidad | 3d | 2023-03-30 | 2023-04-03 | 44 | 30d |  | Tester | 24h | 319.92 |
